# FOPLP 面板式封装

Schedule from a web Gantt chart, 2025-11-22 to 2026-12-23.
Every day is a working day

## Schedule

| ID | WBS | Task | Duration | Start | Finish | Predecessors | Complete | Status |
| --- | --- | --- | --- | --- | --- | --- | --- | --- |
| 2 | 1 | Kickoff | 45d | 2025-12-08 | 2026-01-21 |  | 100% | done |
| 3 | 2 | **Process setup** | 177d | 2025-11-22 | 2026-05-17 |  | 25% |  |
| 4 | 2.1 | Wafer process | 1d | 2025-11-22 | 2025-11-22 |  | 100% |  |
| 5 | 2.2 | Design fix | 40d | 2025-12-08 | 2026-01-16 |  | 100% | done |
| 6 | 2.3 | FOPLP sample | 49d | 2026-01-16 | 2026-03-05 |  |  |  |
| 7 | 2.4 | RE | 73d | 2026-03-06 | 2026-05-17 | 6 |  | waiting |
| 8 | 3 | **Pre-qual lot** | 136d | 2026-04-19 | 2026-09-01 |  | 100% |  |
| 9 | 3.1 | RDL WAFER | 29d | 2026-04-19 | 2026-05-17 |  | 100% |  |
| 10 | 3.2 | FOPLP | 36d | 2026-05-18 | 2026-06-22 | 9 | 100% | waiting |
| 11 | 3.3 | FT | 8d | 2026-06-23 | 2026-06-30 | 10 | 100% | waiting |
| 12 | 3.4 | RE | 63d | 2026-07-01 | 2026-09-01 | 11 | 100% | waiting |
| 13 | 4 | **Formal Qual.** | 145d | 2026-08-01 | 2026-12-23 |  |  |  |
| 14 | 4.1 | RDL WAFER | 29d | 2026-08-01 | 2026-08-29 |  |  |  |
| 15 | 4.2 | FOPLP | 35d | 2026-08-30 | 2026-10-03 | 14 |  | waiting |
| 16 | 4.3 | FT | 8d | 2026-10-04 | 2026-10-11 | 15 |  | waiting |
| 17 | 4.4 | RE | 73d | 2026-10-12 | 2026-12-23 | 16 |  | waiting |

Notes:
- 9: FOPLP8X8 方案 (背面漏铜和漏Si) 待台达确认
- 10: 3-FM+2M
